# Proyeccion de Análisis

Schedule from MS Project, 2014-01-27 to 2014-03-25.

## Calendars

- Standard: Mon-Fri 08:00-12:00, 13:00-17:00; Sat-Sun off.

## Schedule

| ID | WBS | Task | Duration | Start | Finish | Predecessors | Total slack | Constraint |
| --- | --- | --- | --- | --- | --- | --- | --- | --- |
| 1 | 1 | **Sistema de track control para Zubex** | 41.5d | 2014-01-27 | 2014-03-25 |  | 0d |  |
| 2 | 1.1 | **Análisis** | 4d | 2014-01-27 | 2014-01-30 |  | 0d |  |
| 3 | 1.1.1 | Carga de información por medio de interfase | 1d | 2014-01-27 | 2014-01-27 |  | 0d | start no earlier than 2014-01-27 |
| 4 | 1.1.2 | Producción | 0.5d | 2014-01-28 | 2014-01-28 | 3 | 0d | start no earlier than 2013-12-16 |
| 5 | 1.1.3 | Proceso completo de producción | 1d | 2014-01-28 | 2014-01-29 | 4 | 0d | start no earlier than 2013-12-16 |
| 6 | 1.1.4 | Reportes necesarios | 1d | 2014-01-29 | 2014-01-30 | 5 | 0d | start no earlier than 2013-12-18 |
| 7 | 1.1.5 | Datos de etiquetas | 0.5d | 2014-01-30 | 2014-01-30 | 6 | 0d | start no earlier than 2013-12-18 |
| 8 | 1.2 | **Diseño** | 6d | 2014-01-31 | 2014-02-07 |  | 0d |  |
| 9 | 1.2.1 | Elaboración de Wiframes | 3d | 2014-01-31 | 2014-02-04 | 7 | 0d |  |
| 10 | 1.2.2 | Revisión de wiframes | 0.5d | 2014-02-05 | 2014-02-05 | 9 | 0d |  |
| 11 | 1.2.3 | Modificaciónes a wiframes | 1d | 2014-02-05 | 2014-02-06 | 10 | 0d |  |
| 12 | 1.2.4 | Aprobación de wiframes | 0.5d | 2014-02-06 | 2014-02-06 | 11 | 0d |  |
| 13 | 1.2.5 | Base de datos | 1d | 2014-02-07 | 2014-02-07 | 12 | 0d |  |
| 14 | 1.3 | **Construcción** | 25d | 2014-02-10 | 2014-03-14 |  | 0d |  |
| 15 | 1.3.1 | Seguridad | 4d | 2014-02-10 | 2014-02-13 | 13 | 0d |  |
| 16 | 1.3.2 | Catálogos | 4d | 2014-02-14 | 2014-02-19 | 15 | 0d |  |
| 17 | 1.3.3 | Pantallas de proceso | 8d | 2014-02-20 | 2014-03-03 | 16 | 0d |  |
| 18 | 1.3.4 | Impresión de etiquetas | 4d | 2014-03-04 | 2014-03-07 | 17 | 0d |  |
| 19 | 1.3.5 | Reportes | 5d | 2014-03-10 | 2014-03-14 | 18 | 0d |  |
| 20 | 1.4 | **Pruebas UAT** | 1d | 2014-03-17 | 2014-03-17 |  | 0d |  |
| 21 | 1.4.1 | Módulo de seguimiento a producción | 1d | 2014-03-17 | 2014-03-17 | 19 | 0d |  |
| 22 | 1.5 | **Implementación** | 2d | 2014-03-18 | 2014-03-19 |  | 0d |  |
| 23 | 1.5.1 | Módulo de seguimiento a producción | 2d | 2014-03-18 | 2014-03-19 | 21 | 0d |  |
| 24 | 1.6 | **Manual** | 3d | 2014-03-20 | 2014-03-24 |  | 0d |  |
| 25 | 1.6.1 | Elaboración de manual | 3d | 2014-03-20 | 2014-03-24 | 23 | 0d |  |

| ID | WBS | Task | Duration | Start | Finish | Predecessors | Total slack |
| --- | --- | --- | --- | --- | --- | --- | --- |
| 26 | 1.7 | **Capacitación** | 0.5d | 2014-03-25 | 2014-03-25 |  | 0d |
| 27 | 1.7.1 | Capacitación | 0.5d | 2014-03-25 | 2014-03-25 | 25 | 0d |
